# Proyecto Trascendental

How a schedule from MS Project changed from version to version. A marks actual dates.

## Version 1 (saved 2021-05-28)

Note of the change: Project

| ID | WBS | Task | Duration | Start | Finish | Predecessors | Total float | Constraint |
| --- | --- | --- | --- | --- | --- | --- | --- | --- |
| 1 | 1 | **Proyecto Trascendental** | 20d? | 2020-11-09 | 2020-11-30 |  | 0d |  |
| 2 | 1.1 | **Análisis** | 20d? | 2020-11-09 | 2020-11-30 |  | 0d |  |
| 3 | 1.1.1 | **Componente Metodológico** | 20d | 2020-11-09 | 2020-11-30 |  | 0d |  |
| 4 | 1.1.1.1 | **Reuniones** | 20d | 2020-11-09 | 2020-11-30 |  | 0d |  |
| 5 |  | Reuniones 1 | 6h | 2020-11-09 | 2020-11-09 |  |  | start no earlier than 2020-11-09 |
| 6 |  | Reuniones 2 | 6h | 2020-11-16 | 2020-11-16 |  |  | start no earlier than 2020-11-16 |
| 7 |  | Reuniones 3 | 6h | 2020-11-23 | 2020-11-23 |  |  | start no earlier than 2020-11-23 |
| 8 |  | Reuniones 4 | 6h | 2020-11-30 | 2020-11-30 |  |  | start no earlier than 2020-11-30 |
| 9 |  | INICIO | 0d | 2020-11-09 | 2020-11-09 |  | 3.38d |  |
| 10 |  | Nombre del proyecto | 2h | 2020-11-09 | 2020-11-09 | 9 | 3.38d |  |
| 11 |  | Objetivo general | 3h | 2020-11-09 | 2020-11-09 | 10SS | 3.38d |  |
| 12 |  | Objetivos específicos | 2h | 2020-11-10 | 2020-11-10 | 11 | 3.62d |  |
| 13 |  | Planteamiento del problema | 8h | 2020-11-10 | 2020-11-10 | 12SS | 3.62d |  |
| 14 |  | Alcance del proyecto | 3h | 2020-11-10 | 2020-11-10 | 13 | 3.62d |  |
| 15 |  | Justificación | 5h | 2020-11-10 | 2020-11-11 | 14SS | 3.62d |  |
| 16 | 1.1.2 | **Algoritmia** | 8.06d | 2020-11-09 | 2020-11-18 |  | 11.94d |  |
| 17 |  | DFD y PSEINT | 2.84d | 2020-11-09 | 2020-11-18 | 10SS | 11.94d |  |
| 18 | 1.1.3 | **Logo** | 0.25d | 2020-11-10 | 2020-11-10 |  | 4.25d |  |
| 19 |  | Definición de color y estilo | 2h | 2020-11-10 | 2020-11-10 | 15SS | 3.62d |  |
| 20 | 1.1.4 | **Levantamiento de información** | 3d? | 2020-11-10 | 2020-11-13 |  | 4.25d |  |
| 21 |  | Entrevistas | 3d | 2020-11-10 | 2020-11-13 | 19 | 3.62d |  |
| 22 |  | Personal Operativo | 1.5d? | 2020-11-10 | 2020-11-11 | 21SS | 3.62d |  |
| 23 |  | Encuestas | 2d | 2020-11-10 | 2020-11-12 | 22SS | 3.62d |  |
| 24 |  | Personal Administrativo | 2d? | 2020-11-10 | 2020-11-12 | 23SS | 3.62d |  |
| 25 |  | FIN DEL ANALISIS | 0d | 2020-11-12 | 2020-11-12 | 24 | 15.75d |  |
| 26 | 1.2 | **Planeación** | 11.88d | 2020-11-12 | 2020-11-25 |  | 3.88d |  |
| 27 | 1.2.1 | **Mapa de procesos** | 1.5d | 2020-11-12 | 2020-11-13 |  | 4.25d |  |
| 28 |  | INICIO | 0d | 2020-11-12 | 2020-11-12 | 25 | 15.75d |  |
| 29 |  | Mapa de procesos | 5h | 2020-11-12 | 2020-11-12 | 24 | 3.62d |  |
| 30 |  | Diagrama de flujo de proceso BPMN | 1.5d | 2020-11-12 | 2020-11-13 | 29SS | 3.62d |  |
| 31 | 1.2.2 | **Informe de Requerimientos (Estándar IEEE 830)** | 5d | 2020-11-13 | 2020-11-20 |  | 4.25d |  |
| 32 |  | Requerimientos funcionales | 2.62d | 2020-11-13 | 2020-11-18 | 30 | 3.62d |  |
| 33 |  | Requerimientos No funcionales | 3d | 2020-11-13 | 2020-11-18 | 32SS | 9.25d |  |
| 34 |  | Especificaciones de casos de uso | 1d | 2020-11-18 | 2020-11-19 | 33 | 9.25d |  |
| 35 |  | Formato de Caso de Uso Extendido | 2d | 2020-11-18 | 2020-11-20 | 34SS | 9.25d |  |
| 36 | 1.2.3 | **Versionamiento** | 5d | 2020-11-13 | 2020-11-20 |  | 4.25d |  |
| 37 |  | GitHub | 5d | 2020-11-13 | 2020-11-20 | 32SS | 3.62d |  |
| 38 | 1.2.4 | **Modelo Entidad Relación** | 3d | 2020-11-20 | 2020-11-24 |  | 4.75d |  |
| 39 |  | MER | 1d | 2020-11-20 | 2020-11-20 | 37 | 4.75d |  |
| 40 |  | Modelo Relación | 2d | 2020-11-20 | 2020-11-24 | 39 | 4.75d |  |
| 41 |  | Diccionario de datos | 2d | 2020-11-20 | 2020-11-24 | 40SS | 4.75d |  |
| 42 | 1.2.5 | **Diagramas UML clases** | 0.62d | 2020-11-24 | 2020-11-24 |  | 4.75d |  |
| 43 |  | Diagrama de clases | 5h | 2020-11-24 | 2020-11-24 | 41 | 4.75d |  |
| 44 | 1.2.6 | **Prototipo no funcional** | 10d | 2020-11-13 | 2020-11-25 |  | 4.25d |  |
| 45 |  | HTML | 1.4w | 2020-11-13 | 2020-11-25 | 37SS | 4.25d |  |
| 46 |  | CSS | 1.68w | 2020-11-13 | 2020-11-25 | 45SS | 4.25d |  |
| 47 | 1.2.7 | **Diagrama de gantt** | 5.12d | 2020-11-21 | 2020-11-25 |  |  |  |
| 48 |  | Project | 1.5d | 2020-11-24 | 2020-11-25 | 43SS | 4.75d | start no earlier than 2020-11-21 |
| 49 |  | FIN DE PLANEACION | 0d | 2020-11-25 | 2020-11-25 | 48 | 4.75d |  |
| 50 |  | Ejecución | 1d | 2020-11-09 | 2020-11-09 |  |  |  |
| 51 |  | Base de Datos | 1d? | 2020-11-09 | 2020-11-09 |  |  |  |
| 52 |  | Construcción de la Base de Datos | 1d? | 2020-11-09 | 2020-11-09 |  |  |  |
| 53 |  | Datos insertados en la Base de Datos | 1d? | 2020-11-09 | 2020-11-09 |  |  |  |
| 54 |  | Consultas y Joins en la Base de Datos | 1d | 2020-11-09 | 2020-11-09 |  |  |  |
| 55 |  | Prototipo no funcional | 1d | 2020-11-09 | 2020-11-09 |  |  |  |
| 56 |  | Mockup | 1d? | 2020-11-09 | 2020-11-09 |  |  |  |
| 57 |  | Codificación y manejo de CRUD | 1d | 2020-11-09 | 2020-11-09 |  |  |  |
| 58 |  | Conexión base de datos | 1d | 2020-11-09 | 2020-11-09 |  |  |  |
| 59 |  | Crud funcional módulos del sistema | 1d | 2020-11-09 | 2020-11-09 |  |  |  |
| 60 |  | Caso de uso 001 | 1d | 2020-11-09 | 2020-11-09 |  |  |  |
| 61 |  | Caso de uso n.. | 1d | 2020-11-09 | 2020-11-09 |  |  |  |
| 62 |  | Evaluación | 1d | 2020-11-09 | 2020-11-09 |  |  |  |
| 63 |  | Modelo De Calidad | 1d | 2020-11-09 | 2020-11-09 |  |  |  |
| 64 |  | Construcción de manuales | 1d | 2020-11-09 | 2020-11-09 |  |  |  |
| 65 |  | Usuario | 1d | 2020-11-09 | 2020-11-09 |  |  |  |
| 66 |  | Operación | 1d | 2020-11-09 | 2020-11-09 |  |  |  |

## Version 2 (saved 2021-06-25)

Note of the change: Merge branch 'main' of https://github.com/Laura23-g/Proyecto-1 into main

Last finish 2020-11-30 → 2021-01-28 (+59d). Complete tasks 0 → 27.

Added:

| ID | Task | Duration | Start | Finish | Predecessors | Constraint | Resources |
| --- | --- | --- | --- | --- | --- | --- | --- |
| 18 | **Reunión sustentación** | 0.75d | 2020-11-12 | 2020-11-12 |  |  |  |
| 19 | Reunión sustentación 1 | 6h | 2020-11-12 | 2020-11-12 | 17 | start no earlier than 2020-11-09 |  |
| 39 | Diagrama de despliegue | 5h | 2020-11-24 A | 2020-11-25 A | 38 |  | Laura Tatiana Gómez Castillo; Yáxul Santiago Cárdenas Hincapié; Computador [200%]; Escritorio [200%]; Internet [200%]; Silla [200%] |
| 45 | **Normalizacion** | 1d | 2020-11-27 A | 2020-11-30 A |  |  |  |
| 46 | (1FN), (2FN), (3FN) | 8h | 2020-11-27 A | 2020-11-30 A | 44 |  | Lady Daniela Díaz Sánchez; Laura Tatiana Gómez Castillo; Computador [200%]; Escritorio [200%]; Internet [200%]; Silla [200%] |
| 47 | **Reunión sustentación** | 0.75d | 2020-11-30 | 2020-12-01 |  |  |  |
| 48 | Reunión sustentación 1 | 6h | 2020-11-30 | 2020-12-01 | 46 | start no earlier than 2020-11-09 |  |
| 65 | FIN DE EJECUCION | 0d | 2021-01-28 | 2021-01-28 | 64 |  |  |

Removed: 4 Reuniones; 5 Reuniones 1; 6 Reuniones 2; 7 Reuniones 3; 8 Reuniones 4; 16 Algoritmia; 17 DFD y PSEINT; 55 Prototipo no funcional; 56 Mockup

Changed:

| ID | Task | Start | Finish | Duration | Complete | Total float | Predecessors | Other |
| --- | --- | --- | --- | --- | --- | --- | --- | --- |
| 1 | **Proyecto Trascendental** | 2020-11-09 A | 2020-11-30 → 2021-01-28 (+59d) | 20d? → 36d? | 0% → 76% |  |  |  |
| 2 | **Análisis** | 2020-11-09 A | 2020-11-30 → 2020-11-13 (-17d) | 20d? → 5.25d? | 0% → 94% | 0d → 30.75d |  |  |
| 3 | **Componente Metodológico** | 2020-11-09 A | 2020-11-30 → 2020-11-11 (-19d) | 20d → 2.62d | 0% → 99% | 0d → 33.38d |  |  |
| 5 | Nombre del proyecto | 2020-11-09 A | 2020-11-09 A |  | 0% → 100% | 3.38d → none |  |  |
| 6 | Objetivo general | 2020-11-09 A | 2020-11-09 A |  | 0% → 100% | 3.38d → none |  |  |
| 7 | Objetivos específicos | 2020-11-10 A | 2020-11-10 A |  | 0% → 100% | 3.62d → none |  |  |
| 8 | Planteamiento del problema | 2020-11-10 A | 2020-11-10 A |  | 0% → 100% | 3.62d → none |  |  |
| 9 | Alcance del proyecto | 2020-11-10 A | 2020-11-10 A |  | 0% → 100% | 3.62d → none |  |  |
| 10 | Justificación | 2020-11-10 A | 2020-11-11 A |  | 0% → 100% | 3.62d → none |  |  |
| 11 | **Logo** | 2020-11-10 A | 2020-11-10 A |  | 0% → 100% | 4.25d → none |  |  |
| 12 | Definición de color y estilo | 2020-11-10 A | 2020-11-10 A |  | 0% → 100% | 3.62d → none |  |  |
| 13 | **Levantamiento de información** | 2020-11-10 A |  |  | 0% → 92% | 4.25d → 30.75d |  |  |
| 14 | Entrevistas | 2020-11-10 A | 2020-11-13 A |  | 0% → 100% | 3.62d → none |  |  |
| 15 | Personal Operativo | 2020-11-10 A | 2020-11-11 A |  | 0% → 100% | 3.62d → none |  |  |
| 16 | Encuestas | 2020-11-10 A | 2020-11-12 A |  | 0% → 100% | 3.62d → none |  |  |
| 17 | Personal Administrativo | 2020-11-10 A | 2020-11-12 A |  | 0% → 100% | 3.62d → none |  |  |
| 21 | **Planeación** | 2020-11-12 A | 2020-11-25 → 2021-01-28 (+64d) | 11.88d → 31.75d | 0% → 72% | 3.88d → 0d |  |  |
| 22 | **Mapa de procesos** | 2020-11-12 A |  |  | 0% → 99% | 4.25d → 30.25d |  |  |
| 24 | Mapa de procesos | 2020-11-12 A | 2020-11-12 A |  | 0% → 100% | 3.62d → none |  |  |
| 25 | Diagrama de flujo de proceso BPMN | 2020-11-12 A | 2020-11-13 A |  | 0% → 100% | 3.62d → none |  |  |
| 26 | **Informe de Requerimientos (Estándar IEEE 830)** | 2020-11-13 A | 2020-11-20 A |  | 0% → 100% | 4.25d → none |  |  |
| 27 | Requerimientos funcionales | 2020-11-13 A | 2020-11-18 A |  | 0% → 100% | 3.62d → none |  |  |
| 28 | Requerimientos No funcionales | 2020-11-13 A | 2020-11-18 A |  | 0% → 100% | 9.25d → none |  |  |
| 29 | Especificaciones de casos de uso | 2020-11-18 A | 2020-11-19 A |  | 0% → 100% | 9.25d → none |  |  |
| 30 | Formato de Caso de Uso Extendido | 2020-11-18 A | 2020-11-20 A |  | 0% → 100% | 9.25d → none |  |  |
| 31 | **Versionamiento** | 2020-11-13 A | 2020-11-20 A |  | 0% → 100% | 4.25d → none |  |  |
| 32 | GitHub | 2020-11-13 A | 2020-11-20 A |  | 0% → 100% | 3.62d → none |  |  |
| 33 | **Modelo Entidad Relación** | 2020-11-20 A | 2020-11-24 A |  | 0% → 100% | 4.75d → none |  |  |
| 34 | MER | 2020-11-20 A | 2020-11-20 A |  | 0% → 100% | 4.75d → none |  |  |
| 35 | Modelo Relación | 2020-11-20 A | 2020-11-24 A |  | 0% → 100% | 4.75d → none |  |  |
| 36 | Diccionario de datos | 2020-11-20 A | 2020-11-24 A |  | 0% → 100% | 4.75d → none |  |  |
| 37 | **Diagramas UML** | 2020-11-24 A | 2020-11-24 → 2020-11-25 A (+1d) | 0.62d → 1.25d | 0% → 100% | 4.75d → none |  | was named Diagramas UML clases |
| 38 | Diagrama de clases | 2020-11-24 A | 2020-11-24 A |  | 0% → 100% | 4.75d → none |  |  |
| 40 | **Prototipo no funcional** | 2020-11-13 A | 2020-11-25 A |  | 0% → 100% | 4.25d → none |  |  |
| 41 | HTML | 2020-11-13 A | 2020-11-25 A |  | 0% → 100% | 4.25d → none |  |  |
| 42 | CSS | 2020-11-13 A | 2020-11-25 A |  | 0% → 100% | 4.25d → none |  |  |
| 43 | **Diagrama de gantt** | 2020-11-21 → 2020-11-25 A (+4d) | 2020-11-25 → 2020-11-27 A (+2d) | 5.12d → 3d | 0% → 100% |  |  |  |
| 44 | Project | 2020-11-24 → 2020-11-25 A (+1d) | 2020-11-25 → 2020-11-27 A (+2d) | 1.5d → 3d | 0% → 100% | 4.75d → none | 38SS → 42 | constraint start no earlier than 2020-11-21 → none; resources Laura Tatiana Gómez Castillo; Lady Daniela Díaz Sánchez; Computador [200%]; Escritorio [200%]; Internet [200%]; Silla [200%] → none |
| 49 | FIN DE PLANEACION | 2020-11-25 → 2020-12-01 (+6d) | 2020-11-25 → 2020-12-01 (+6d) |  |  | 4.75d → 0d | 44 → 48 |  |
| 50 | **Ejecución** | 2020-11-09 → 2020-12-01 (+22d) | 2020-11-09 → 2021-01-28 (+80d) | 1d → 15.5d |  | none → 0d |  |  |
| 51 | **Base de Datos** | 2020-11-09 → 2020-12-01 (+22d) | 2020-11-09 → 2020-12-04 (+25d) | 1d? → 4d |  | none → 0d |  |  |
| 52 | Construcción de la Base de Datos | 2020-11-09 → 2020-12-01 (+22d) | 2020-11-09 → 2020-12-01 (+22d) | 1d? → 1d |  | none → 0d | none → 49 |  |
| 53 | Datos insertados en la Base de Datos | 2020-11-09 → 2020-12-01 (+22d) | 2020-11-09 → 2020-12-03 (+24d) | 1d? → 2d |  | none → 0d | none → 52 |  |
| 54 | Consultas y Joins en la Base de Datos | 2020-11-09 → 2020-12-03 (+24d) | 2020-11-09 → 2020-12-04 (+25d) | 1d → 8h |  | none → 0d | none → 53 |  |
| 55 | **Codificación y manejo de CRUD** | 2020-11-09 → 2020-12-04 (+25d) | 2020-11-09 → 2020-12-11 (+32d) | 1d → 6.5d |  | none → 0d |  |  |
| 56 | Conexión base de datos | 2020-11-09 → 2020-12-04 (+25d) | 2020-11-09 → 2020-12-04 (+25d) |  |  | none → 0d | none → 54 |  |
| 57 | Crud funcional módulos del sistema | 2020-11-09 → 2020-12-04 (+25d) | 2020-11-09 → 2020-12-07 (+28d) | 1d → 1.5d |  | none → 0d | none → 56 |  |
| 58 | Caso de uso 001 | 2020-11-09 → 2020-12-07 (+28d) | 2020-11-09 → 2020-12-10 (+31d) | 1d → 2d |  | none → 0d | none → 57 |  |
| 59 | Caso de uso n.. | 2020-11-09 → 2020-12-10 (+31d) | 2020-11-09 → 2020-12-11 (+32d) | 1d → 2d |  | none → 0d | none → 58 |  |
| 60 | **Evaluación** | 2020-11-09 → 2020-12-11 (+32d) | 2020-11-09 → 2021-01-28 (+80d) | 1d → 5d |  | none → 0d |  |  |
| 61 | Modelo De Calidad | 2020-11-09 → 2020-12-11 (+32d) | 2020-11-09 → 2021-01-26 (+78d) | 1d → 3d |  | none → 0d | none → 59 |  |
| 62 | **Construcción de manuales** | 2020-11-09 → 2021-01-27 (+79d) | 2020-11-09 → 2021-01-28 (+80d) | 1d → 2d |  | none → 0d |  |  |
| 63 | Usuario | 2020-11-09 → 2021-01-27 (+79d) | 2020-11-09 → 2021-01-27 (+79d) |  |  | none → 0d | none → 61 |  |
| 64 | Operación | 2020-11-09 → 2021-01-27 (+79d) | 2020-11-09 → 2021-01-28 (+80d) |  |  | none → 0d | none → 63 |  |

## Version 3 (saved 2021-07-16)

Note of the change: Merge branch 'main' of https://github.com/Laura23-g/Proyecto-1 into main

Last finish 2021-01-28 → 2021-03-02 (+33d). Complete tasks 27 → 3.

Added:

| ID | Task | Duration | Start | Finish | Predecessors |
| --- | --- | --- | --- | --- | --- |
| 60 | **PROTOTIPO NO FUNCIONAL FINAL** | 4d | 2020-12-09 | 2020-12-11 |  |
| 61 | Html | 2d | 2020-12-10 | 2020-12-11 | 59 |
| 62 | Css | 2d | 2020-12-09 | 2020-12-10 | 59SS |
| 63 | Javascript | 2d | 2020-12-10 | 2020-12-11 | 62 |
| 64 | **Project** | 0.38d | 2020-12-14 | 2020-12-14 |  |
| 65 | Informe de Costos | 3h | 2020-12-14 | 2020-12-14 | 63 |
| 67 | **Seguimiento** | 2.25d | 2020-12-14 | 2021-01-26 |  |
| 69 | Tecnico | 5h | 2020-12-14 | 2020-12-14 | 65 |
| 70 | Instalación | 5h | 2020-12-14 | 2021-01-26 | 69 |
| 71 | **Pruebas** | 1d | 2020-12-14 | 2021-01-26 |  |
| 72 | Unitarias | 3h | 2021-01-26 | 2021-01-26 | 70 |
| 73 | Caja Negra | 3h | 2020-12-14 | 2020-12-14 | 70SS |
| 74 | Caja Blanca | 3h | 2020-12-14 | 2020-12-14 | 70SS |
| 75 | **Diagrama de Distribucion** | 1d | 2021-01-26 | 2021-01-26 |  |
| 76 | Diagrama de Distribución en Software | 8h | 2021-01-26 | 2021-01-26 | 74 |
| 77 | **Informe** | 0.62d | 2020-12-14 | 2021-01-26 |  |
| 78 | Migración de Datos | 5h | 2020-12-14 | 2021-01-26 | 74SS |
| 79 | **Plan de proyecto** | 1.62d | 2020-12-14 | 2021-01-26 |  |
| 80 | Plan de Instalación | 8h | 2021-01-26 | 2021-01-26 | 78 |
| 81 | Plan de Respaldo | 8h | 2020-12-14 | 2021-01-26 | 78SS |
| 82 | Plan de Migración | 8h | 2020-12-14 | 2021-01-26 | 78SS |
| 83 | FIN DE SEGUIMIENTO | 0d | 2021-01-26 | 2021-01-26 | 82 |
| 84 | **Desarrollo** | 34.38d | 2020-11-09 | 2021-01-27 |  |
| 85 | **Proveedores** | 0.62d | 2021-01-26 | 2021-01-26 |  |
| 86 | Cuadro Comparativo | 5h | 2021-01-26 | 2021-01-26 | 83 |
| 87 | **Desarrollo de Software** | 0.5d | 2021-01-26 | 2021-01-27 |  |
| 88 | Contrato | 4h | 2021-01-26 | 2021-01-27 | 86 |
| 89 | **Pruebas** | 34.25d | 2020-11-09 | 2021-01-27 |  |
| 90 | Documentación | 8h | 2021-01-26 | 2021-01-27 | 86SS |
| 91 | FIN DE DESARROLLO | 0d | 2020-11-09 | 2020-11-09 |  |
| 93 | Modelo de Calidad | 5h | 2021-01-27 | 2021-01-27 | 90 |
| 94 | **Contrucción de Manuales** | 1.25d | 2021-01-27 | 2021-01-28 |  |
| 97 | **Revision Final** | 0.75d | 2021-01-27 | 2021-01-28 |  |
| 98 | Sustentación | 6h | 2021-01-27 | 2021-01-28 | 96 |
| 99 | FIN DE EVALUACIÓN | 0d | 2021-01-27 | 2021-01-27 | 98SS |
| 100 | FIN DEL PROYECTO | 0d | 2020-11-09 | 2020-11-09 |  |

Removed: 61 Modelo De Calidad

Changed:

| ID | Task | Start | Finish | Duration | Complete | Total float | Predecessors | Other |
| --- | --- | --- | --- | --- | --- | --- | --- | --- |
| 1 | **Proyecto Trascendental** |  | 2021-01-28 → 2021-03-02 (+33d) | 36d? → 67.75d | 76% → 52% |  |  | baseline start none → 2020-11-09; baseline finish none → 2020-12-10 |
| 2 | **Análisis** |  | 2020-11-13 → 2020-11-12 (-1d) | 5.25d? → 4.5d | 94% → 97% | 30.75d → 63.25d |  | baseline start none → 2020-11-09; baseline finish none → 2020-11-12 |
| 3 | **Componente Metodológico** |  | 2020-11-11 → 2020-11-12 (+1d) | 2.62d → 4.38d | 99% → 95% | 33.38d → 63.38d |  | baseline start none → 2020-11-09; baseline finish none → 2020-11-11 |
| 4 | INICIO |  |  |  |  | 36d → 0.12d |  | baseline start none → 2020-11-09; baseline finish none → 2020-11-09 |
| 5 | Nombre del proyecto |  | 2020-11-09 A → 2020-11-09 |  | 100% → 50% | none → 67.5d |  | resources Yáxul Santiago Cárdenas Hincapié; Computador; Escritorio; Internet; Silla → Yáxul Santiago Cárdenas Hincapié; Computador; Escritorio; Internet; Silla [200%]; baseline start none → 2020-11-09; baseline finish none → 2020-11-09 |
| 6 | Objetivo general |  | 2020-11-09 A → 2020-11-09 |  | 100% → 99% | none → 1d |  | resources Laura Tatiana Gómez Castillo; Lady Daniela Díaz Sánchez; Computador [200%]; Escritorio [200%]; Internet [200%]; Silla [200%] → Laura Tatiana Gómez Castillo; Lady Daniela Díaz Sánchez; Computador; Escritorio; Internet; Silla [200%]; baseline start none → 2020-11-09; baseline finish none → 2020-11-09 |
| 7 | Objetivos específicos |  | 2020-11-10 A → 2020-11-10 |  | 100% → 99% | none → 66.12d |  | baseline start none → 2020-11-10; baseline finish none → 2020-11-10 |
| 8 | Planteamiento del problema |  | 2020-11-10 A → 2020-11-10 | 8h → 5h | 100% → 99% | none → 1.75d |  | resources Lady Daniela Díaz Sánchez; Laura Tatiana Gómez Castillo; Yáxul Santiago Cárdenas Hincapié; Computador [300%]; Escritorio [300%]; Internet [300%]; Silla [300%] → Lady Daniela Díaz Sánchez; Laura Tatiana Gómez Castillo; Yáxul Santiago Cárdenas Hincapié; Computador; Escritorio; Internet; Silla [300%]; baseline start none → 2020-11-10; baseline finish none → 2020-11-10 |
| 9 | Alcance del proyecto |  | 2020-11-10 A → 2020-11-12 (+2d) |  | 100% → 99% | none → 63.38d |  | resources Yáxul Santiago Cárdenas Hincapié; Brayan Gómez López; Computador [200%]; Escritorio [200%]; Internet [200%]; Silla [200%] → Yáxul Santiago Cárdenas Hincapié; Brayan Gómez López; Computador; Escritorio; Internet; Silla [200%]; baseline start none → 2020-11-10; baseline finish none → 2020-11-10 |
| 10 | Justificación |  | 2020-11-11 A → 2020-11-11 |  | 100% → 99% | none → 65.12d |  | baseline start none → 2020-11-10; baseline finish none → 2020-11-11 |
| 11 | **Logo** |  | 2020-11-10 A → 2020-11-10 |  | 100% → 50% | none → 1d |  | baseline start none → 2020-11-10; baseline finish none → 2020-11-10 |
| 12 | Definición de color y estilo |  | 2020-11-10 A → 2020-11-10 |  | 100% → 50% | none → 1d |  | resources Yáxul Santiago Cárdenas Hincapié; Computador; Escritorio; Internet; Silla → Yáxul Santiago Cárdenas Hincapié; Computador; Escritorio; Internet; Silla [200%]; baseline start none → 2020-11-10; baseline finish none → 2020-11-10 |
| 13 | **Levantamiento de información** |  | 2020-11-13 → 2020-11-12 (-1d) | 3d? → 2.25d | 92% → 99% | 30.75d → 63.25d |  | baseline start none → 2020-11-10; baseline finish none → 2020-11-12 |
| 14 | Entrevistas |  | 2020-11-13 A → 2020-11-11 (-2d) | 3d → 1d | 100% → 99% | none → 64.5d |  | baseline start none → 2020-11-10; baseline finish none → 2020-11-11 |
| 15 | Personal Operativo |  | 2020-11-11 A → 2020-11-12 (+1d) | 1.5d? → 2d | 100% → 99% | none → 63.5d |  | resources Lady Daniela Díaz Sánchez; Computador; Escritorio; Internet; Silla → Lady Daniela Díaz Sánchez; Computador; Escritorio; Internet; Silla [200%]; baseline start none → 2020-11-10; baseline finish none → 2020-11-12 |
| 16 | Encuestas |  | 2020-11-12 A → 2020-11-11 (-1d) | 2d → 1d | 100% → 99% | none → 64.5d |  | resources Laura Tatiana Gómez Castillo; Yáxul Santiago Cárdenas Hincapié; Computador [200%]; Escritorio [200%]; Internet [200%]; Silla [200%] → Laura Tatiana Gómez Castillo; Yáxul Santiago Cárdenas Hincapié; Computador; Escritorio; Internet; Silla [200%]; baseline start none → 2020-11-10; baseline finish none → 2020-11-11 |
| 17 | Personal Administrativo |  | 2020-11-12 A → 2020-11-11 (-1d) | 2d? → 1.5d | 100% → 99% | none → 1.38d |  | resources none → Computador; Escritorio; Internet; Laura Tatiana Gómez Castillo; Silla [200%]; Yáxul Santiago Cárdenas Hincapié; baseline start none → 2020-11-10; baseline finish none → 2020-11-11 |
| 18 | **Reunión sustentación** | 2020-11-12 A | 2020-11-12 A |  | 0% → 100% | 31d → none |  | baseline start none → 2020-11-12; baseline finish none → 2020-11-12 |
| 19 | Reunión sustentación 1 | 2020-11-12 A | 2020-11-12 A |  | 0% → 100% | 31d → none |  | baseline start none → 2020-11-12; baseline finish none → 2020-11-12 |
| 20 | FIN DEL ANALISIS | 2020-11-12 → 2020-11-11 (-1d) | 2020-11-12 → 2020-11-11 (-1d) |  |  | 31.75d → 64d |  | baseline start none → 2020-11-11; baseline finish none → 2020-11-11 |
| 21 | **Planeación** | 2020-11-12 A → 2020-11-11 A (-1d) | 2021-01-28 → 2021-03-02 (+33d) | 31.75d → 64d | 72% → 74% |  |  | baseline start none → 2020-11-11; baseline finish none → 2020-11-30 |
| 22 | **Mapa de procesos** | 2020-11-12 A → 2020-11-11 A (-1d) |  | 1.5d → 2.12d |  | 30.25d → 61.88d |  | baseline start none → 2020-11-11; baseline finish none → 2020-11-13 |
| 23 | INICIO | 2020-11-12 → 2020-11-11 (-1d) | 2020-11-12 → 2020-11-11 (-1d) |  |  | 31.75d → 64d |  | baseline start none → 2020-11-11; baseline finish none → 2020-11-11 |
| 24 | Mapa de procesos |  | 2020-11-12 A → 2020-11-13 (+1d) |  | 100% → 99% | none → 61.88d |  | baseline start none → 2020-11-12; baseline finish none → 2020-11-12 |
| 25 | Diagrama de flujo de proceso BPMN |  | 2020-11-13 A → 2020-11-13 |  | 100% → 99% | none → 2d |  | resources Lady Daniela Díaz Sánchez; Laura Tatiana Gómez Castillo; Paulo Sebastian Correa Espinosa; Yáxul Santiago Cárdenas Hincapié; Computador [400%]; Escritorio [400%]; Internet [400%]; Silla [400%] → Lady Daniela Díaz Sánchez; Laura Tatiana Gómez Castillo; Paulo Sebastian Correa Espinosa; Yáxul Santiago Cárdenas Hincapié; Computador; Escritorio; Internet; Silla [400%]; baseline start none → 2020-11-12; baseline finish none → 2020-11-13 |
| 26 | **Informe de Requerimientos (Estándar IEEE 830)** |  | 2020-11-20 A → 2020-11-20 | 5d → 5.12d | 100% → 99% | none → 56.88d |  | baseline start none → 2020-11-13; baseline finish none → 2020-11-20 |
| 27 | Requerimientos funcionales |  | 2020-11-18 A → 2020-11-18 | 2.62d → 2d | 100% → 99% | none → 58.62d |  | resources Yáxul Santiago Cárdenas Hincapié; Laura Tatiana Gómez Castillo; Computador [200%]; Escritorio [200%]; Internet [200%]; Silla [200%] → Yáxul Santiago Cárdenas Hincapié; Laura Tatiana Gómez Castillo; Computador; Escritorio; Internet; Silla [200%]; baseline start none → 2020-11-13; baseline finish none → 2020-11-17 |
| 28 | Requerimientos No funcionales |  | 2020-11-18 A → 2020-11-17 (-1d) | 3d → 2d | 100% → 99% | none → 2d |  | resources Brayan Gómez López; Lady Daniela Díaz Sánchez; Computador [200%]; Escritorio [200%]; Internet [200%]; Silla [200%] → Brayan Gómez López; Lady Daniela Díaz Sánchez; Computador; Escritorio; Internet; Silla [200%]; baseline start none → 2020-11-13; baseline finish none → 2020-11-17 |
| 29 | Especificaciones de casos de uso |  | 2020-11-19 A → 2020-11-19 |  | 100% → 99% | none → 57.88d |  | resources Lady Daniela Díaz Sánchez; Laura Tatiana Gómez Castillo; Computador [200%]; Escritorio [200%]; Internet [200%]; Silla [200%] → Lady Daniela Díaz Sánchez; Laura Tatiana Gómez Castillo; Computador; Escritorio; Internet; Silla [200%]; baseline start none → 2020-11-18; baseline finish none → 2020-11-19 |
| 30 | Formato de Caso de Uso Extendido |  | 2020-11-20 A → 2020-11-20 |  | 100% → 99% | none → 56.88d |  | resources Brayan Gómez López; Yáxul Santiago Cárdenas Hincapié; Computador [200%]; Escritorio [200%]; Internet [200%]; Silla [200%] → Brayan Gómez López; Yáxul Santiago Cárdenas Hincapié; Computador; Escritorio; Internet; Silla [200%]; baseline start none → 2020-11-18; baseline finish none → 2020-11-20 |
| 31 | **Versionamiento** |  | 2020-11-20 A → 2020-11-20 |  | 100% → 99% | none → 2d |  | baseline start none → 2020-11-13; baseline finish none → 2020-11-20 |
| 32 | GitHub |  | 2020-11-20 A → 2020-11-20 |  | 100% → 99% | none → 2d |  | resources Brayan Gómez López; Lady Daniela Díaz Sánchez; Laura Tatiana Gómez Castillo; Yáxul Santiago Cárdenas Hincapié; Computador [400%]; Escritorio [400%]; Internet [400%]; Silla [400%] → Brayan Gómez López; Lady Daniela Díaz Sánchez; Laura Tatiana Gómez Castillo; Yáxul Santiago Cárdenas Hincapié; Computador; Escritorio; Internet; Silla [400%]; baseline start none → 2020-11-13; baseline finish none → 2020-11-20 |
| 33 | **Modelo Entidad Relación** |  | 2020-11-24 A → 2020-11-30 (+6d) | 3d → 9.12d | 100% → 99% | none → 47.88d |  | baseline start none → 2020-11-20; baseline finish none → 2020-11-24 |
| 34 | MER |  | 2020-11-20 A → 2020-11-24 (+4d) |  | 100% → 99% | none → 2.88d |  | baseline start none → 2020-11-20; baseline finish none → 2020-11-20 |
| 35 | Modelo Relación |  | 2020-11-24 A → 2020-11-30 (+6d) |  | 100% → 99% | none → 47.88d |  | resources Lady Daniela Díaz Sánchez; Laura Tatiana Gómez Castillo; Yáxul Santiago Cárdenas Hincapié; Computador [300%]; Escritorio [300%]; Internet [300%]; Silla [300%] → Lady Daniela Díaz Sánchez; Laura Tatiana Gómez Castillo; Yáxul Santiago Cárdenas Hincapié; Computador; Escritorio; Internet; Silla [300%]; baseline start none → 2020-11-20; baseline finish none → 2020-11-24 |
| 36 | Diccionario de datos |  | 2020-11-24 A → 2020-11-23 (-1d) | 2d → 1d | 100% → 99% | none → 1.62d |  | resources Lady Daniela Díaz Sánchez; Laura Tatiana Gómez Castillo; Computador [200%]; Escritorio [200%]; Internet [200%]; Silla [200%] → Lady Daniela Díaz Sánchez; Laura Tatiana Gómez Castillo; Computador; Escritorio; Internet; Silla [200%]; baseline start none → 2020-11-20; baseline finish none → 2020-11-23 |
| 37 | **Diagramas UML** |  | 2020-11-25 A → 2020-11-26 (+1d) | 1.25d → 2.62d | 100% → 99% | none → 51.38d |  | baseline start none → 2020-11-24; baseline finish none → 2020-11-25 |
| 38 | Diagrama de clases |  | 2020-11-24 A → 2020-11-24 |  | 100% → 99% | none → 0.88d |  | resources Brayan Gómez López; Yáxul Santiago Cárdenas Hincapié; Computador [200%]; Escritorio [200%]; Internet [200%]; Silla [200%] → Brayan Gómez López; Yáxul Santiago Cárdenas Hincapié; Computador; Escritorio; Internet; Silla [200%]; baseline start none → 2020-11-24; baseline finish none → 2020-11-24 |
| 39 | Diagrama de despliegue |  | 2020-11-25 A → 2020-11-26 (+1d) |  | 100% → 99% | none → 51.38d |  | resources Laura Tatiana Gómez Castillo; Yáxul Santiago Cárdenas Hincapié; Computador [200%]; Escritorio [200%]; Internet [200%]; Silla [200%] → Laura Tatiana Gómez Castillo; Yáxul Santiago Cárdenas Hincapié; Computador; Escritorio; Internet; Silla [200%]; baseline start none → 2020-11-24; baseline finish none → 2020-11-25 |
| 40 | **Prototipo no funcional** |  | 2020-11-25 A → 2020-11-25 |  | 100% → 50% | none → 52d |  | baseline start none → 2020-11-13; baseline finish none → 2020-11-20 |
| 41 | HTML |  | 2020-11-25 A → 2020-11-25 | 1.4w → 10d | 100% → 50% | none → 52d |  | resources Lady Daniela Díaz Sánchez; Laura Tatiana Gómez Castillo; Computador [200%]; Escritorio [200%]; Internet [200%]; Silla [200%] → Lady Daniela Díaz Sánchez; Laura Tatiana Gómez Castillo; Computador; Escritorio; Internet; Silla [300%]; baseline start none → 2020-11-13; baseline finish none → 2020-11-20 |
| 42 | CSS |  | 2020-11-25 A → 2020-11-25 | 1.68w → 10d | 100% → 50% | none → 2d |  | resources Brayan Gómez López; Yáxul Santiago Cárdenas Hincapié; Computador [200%]; Escritorio [200%]; Internet [200%]; Silla [200%] → Brayan Gómez López; Yáxul Santiago Cárdenas Hincapié; Computador; Escritorio; Internet; Silla [300%]; baseline start none → 2020-11-13; baseline finish none → 2020-11-20 |
| 43 | **Diagrama de gantt** |  | 2020-11-27 A → 2020-11-27 |  | 100% → 67% | none → 0.62d |  | baseline start none → 2020-11-25; baseline finish none → 2020-11-27 |
| 44 | Project |  | 2020-11-27 A → 2020-11-27 |  | 100% → 67% | none → 0.62d |  | baseline start none → 2020-11-25; baseline finish none → 2020-11-27 |
| 45 | **Normalizacion** |  | 2020-11-30 A → 2021-03-02 (+92d) | 1d → 49d | 100% → 56% | none → 0d |  | baseline start none → 2020-11-27; baseline finish none → 2020-11-30 |
| 46 | (1FN), (2FN), (3FN) |  | 2020-11-30 A → 2021-03-02 (+92d) | 8h → 9h | 100% → 56% | none → 0d |  | resources Lady Daniela Díaz Sánchez; Laura Tatiana Gómez Castillo; Computador [200%]; Escritorio [200%]; Internet [200%]; Silla [200%] → Lady Daniela Díaz Sánchez; Laura Tatiana Gómez Castillo; Computador; Escritorio; Internet; Silla [300%]; baseline start none → 2020-11-27; baseline finish none → 2020-11-30 |
| 47 | **Reunión sustentación** | 2020-11-30 A | 2020-12-01 → 2020-11-30 A (-1d) |  | 0% → 100% | 0d → none |  | baseline start none → 2020-11-30; baseline finish none → 2020-11-30 |
| 48 | Reunión sustentación 1 | 2020-11-30 A | 2020-12-01 → 2020-11-30 A (-1d) | 6h → 3h | 0% → 100% | 0d → none |  | baseline start none → 2020-11-30; baseline finish none → 2020-11-30 |
| 49 | FIN DE PLANEACION | 2020-12-01 → 2020-11-30 A (-1d) | 2020-12-01 → 2020-11-30 A (-1d) |  | 0% → 100% | 0d → none |  | baseline start none → 2020-11-30; baseline finish none → 2020-11-30 |
| 50 | **Ejecución** | 2020-12-01 → 2020-11-30 (-1d) | 2021-01-28 → 2020-12-14 (-45d) | 15.5d → 11.5d |  | 0d → 32.12d |  | baseline start none → 2020-11-09; baseline finish none → 2020-12-10 |
| 51 | **Base de Datos** | 2020-12-01 → 2020-11-30 (-1d) | 2020-12-04 → 2020-12-03 (-1d) | 4d → 3.12d |  | 0d → 32.12d |  | baseline start none → 2020-11-30; baseline finish none → 2020-12-03 |
| 52 | Construcción de la Base de Datos | 2020-12-01 → 2020-11-30 (-1d) |  | 1d → 8h |  | 0d → 32.12d |  | baseline start none → 2020-11-30; baseline finish none → 2020-12-01 |
| 53 | Datos insertados en la Base de Datos |  | 2020-12-03 → 2020-12-02 (-1d) | 2d → 1.5d |  | 0d → 32.12d |  | baseline start none → 2020-12-01; baseline finish none → 2020-12-02 |
| 54 | Consultas y Joins en la Base de Datos | 2020-12-03 → 2020-12-02 (-1d) | 2020-12-04 → 2020-12-03 (-1d) | 8h → 5h |  | 0d → 32.12d |  | baseline start none → 2020-12-02; baseline finish none → 2020-12-03 |
| 55 | **Codificación y manejo de CRUD** | 2020-12-04 → 2020-12-03 (-1d) | 2020-12-11 → 2020-12-10 (-1d) | 6.5d → 5.5d |  | 0d → 32.12d |  | baseline start none → 2020-12-03; baseline finish none → 2020-12-10 |
| 56 | Conexión base de datos | 2020-12-04 → 2020-12-03 (-1d) | 2020-12-04 → 2020-12-03 (-1d) |  |  | 0d → 32.12d |  | baseline start none → 2020-12-03; baseline finish none → 2020-12-03 |
| 57 | Crud funcional módulos del sistema | 2020-12-04 → 2020-12-03 (-1d) | 2020-12-07 → 2020-12-04 (-3d) |  |  | 0d → 32.12d |  | baseline start none → 2020-12-03; baseline finish none → 2020-12-04 |
| 58 | Caso de uso 001 |  | 2020-12-10 → 2020-12-09 (-1d) | 2d → 1.5d |  | 0d → 32.12d |  | baseline start none → 2020-12-07; baseline finish none → 2020-12-09 |
| 59 | Caso de uso n.. | 2020-12-10 → 2020-12-09 (-1d) | 2020-12-11 → 2020-12-10 (-1d) | 2d → 1.5d |  | 0d → 32.12d |  | baseline start none → 2020-12-09; baseline finish none → 2020-12-10 |
| 66 | FIN DE EJECUCION | 2021-01-28 → 2020-12-14 (-45d) | 2021-01-28 → 2020-12-14 (-45d) |  |  | 0d → 36.12d | 96 → 65 | baseline start none → 2020-11-09; baseline finish none → 2020-11-09 |
| 68 | **Construcción de manuales** | 2021-01-27 → 2020-12-14 (-44d) | 2021-01-28 → 2021-01-26 (-2d) | 2d → 1.25d |  | 0d → 32.12d |  | baseline start none → 2020-11-09; baseline finish none → 2020-11-09 |
| 92 | **Evaluación** | 2020-12-11 → 2021-01-27 (+47d) |  | 5d → 1.38d |  | 0d → 32.12d |  | baseline start none → 2020-11-09; baseline finish none → 2020-11-09 |
| 95 | Usuario |  | 2021-01-27 → 2021-01-28 (+1d) | 1d → 5h |  | 0d → 32.25d | Modelo De Calidad → 93 | baseline start none → 2020-11-09; baseline finish none → 2020-11-09 |
| 96 | Operación |  | 2021-01-28 → 2021-01-27 (-1d) | 1d → 5h |  | 0d → 32.12d | 95 → 93SS | baseline start none → 2020-11-09; baseline finish none → 2020-11-09 |
